# rush2

Schedule from MS Project, 2010-06-28 to 2010-11-19, A marks actual dates.

## Calendars

- Standard: Mon-Fri 08:00-12:00, 13:00-17:00; Sat-Sun off.

## Resources

| Resource | Group |
| --- | --- |
| Ari | Texture |
| Aaron | Concept |
| Bruce | Concept |
| Evan | Modeler |
| Kris | Rigging |
| Jeremy | Animation |
| Alonso | Animation |
| Carlos | Modeler |
| Texture Artist 2 |  |
| TD 2 |  |

## Schedule

| ID | WBS | Task | Type | Duration | Start | Finish | Predecessors | Complete | Remaining | Total slack | Free slack | Constraint | Resources | Work | Actual work |
| --- | --- | --- | --- | --- | --- | --- | --- | --- | --- | --- | --- | --- | --- | --- | --- |
| 1 | 1 | R&D | manual | 3d | 2010-06-28 | 2010-06-30 |  |  |  |  |  |  | Evan | 24h |  |
| 2 | 2 | R&D | manual | 5d | 2010-06-28 | 2010-07-02 |  |  |  |  |  |  | Kris | 40h |  |
| 3 | 3 | Map Texture R&D | manual | 4d | 2010-06-28 | 2010-07-01 |  |  |  |  |  |  | Ari | 32h |  |
| 5 | 4 | Inhibitor Concept | manual | 3d | 2010-06-28 A | 2010-06-30 A |  | 100% |  |  |  |  | Bruce | 24h | 24h |
| 6 | 5 | Inhibitor Model |  | 3d | 2010-07-01 A | 2010-07-05 A | 5 | 100% |  |  |  |  | Evan | 24h | 24h |
| 7 | 6 | Inhibitor Texture |  | 4d | 2010-07-06 A | 2010-07-09 A | 6 | 100% |  |  |  |  | Ari | 32h | 32h |
| 8 | 7 | Inhibitor Animation |  | 2d | 2010-07-06 A | 2010-07-07 A | 6 | 100% |  |  |  |  | Alonso | 16h | 16h |
| 9 | 8 | Inhibitor Effects |  | 4d | 2010-07-08 A | 2010-07-13 | 8 | 50% | 2d | 93d |  |  | Kris | 32h | 16h |
| 11 | 9 | Goldmine Concept | manual | 2d | 2010-06-28 A | 2010-06-29 A |  | 100% |  |  |  |  | Aaron | 16h | 16h |
| 12 | 10 | Goldmine Model |  | 2d | 2010-06-30 A | 2010-07-01 A | 11 | 100% |  |  |  |  | Carlos | 16h | 16h |
| 13 | 11 | Goldmine Texture |  | 2d | 2010-07-02 A | 2010-07-05 A | 12 | 100% |  |  |  |  | Ari | 16h | 16h |
| 14 | 12 | Goldmine Animation |  | 1d | 2010-07-02 A | 2010-07-02 A | 12 | 100% |  |  |  |  | Jeremy | 8h | 8h |
| 15 | 13 | Goldmine Effects |  | 2.5d | 2010-07-05 A | 2010-07-07 A | 14 | 100% |  |  |  |  | Kris | 20h | 20h |
| 17 | 14 | Tower 1 Concept | manual | 4d | 2010-07-01 A | 2010-07-06 A |  | 100% |  |  |  |  | Bruce | 32h | 32h |
| 18 | 15 | Tower 1 Model |  | 3d | 2010-07-07 A | 2010-07-09 A | 17 | 100% |  |  |  |  | Evan | 24h | 24h |
| 19 | 16 | Tower 1 Texture |  | 4d | 2010-07-12 | 2010-07-15 | 18 |  |  | 91d |  |  | Ari | 32h |  |
| 20 | 17 | Tower 1 Animation |  | 2d | 2010-07-12 | 2010-07-13 | 18 |  |  | 90d | 0d |  | Alonso | 16h |  |
| 21 | 18 | Tower 1 Effects |  | 3d | 2010-07-14 | 2010-07-16 | 20 |  |  | 90d |  |  | Kris | 24h |  |
| 23 | 19 | Guardian Concept | manual | 3d | 2010-07-07 A | 2010-07-09 A |  | 100% |  |  |  |  | Bruce | 24h | 24h |
| 24 | 20 | Guardian Model |  | 4d | 2010-07-12 A | 2010-07-15 | 23 | 80% | 0.8d | 83d | 0d |  | Evan | 32h | 25.6h |
| 25 | 21 | Guardian Texture |  | 4d | 2010-07-16 | 2010-07-21 | 24 |  |  | 83d | 0d |  | Ari | 32h |  |
| 26 | 22 | Guardian Animation |  | 4d | 2010-07-22 | 2010-07-27 | 25 |  |  | 83d |  |  | Alonso | 32h |  |
| 27 | 23 | Guardian Effects |  | 7d | 2010-07-19 | 2010-07-27 |  |  |  | 83d |  | start no earlier than 2010-07-19 | Kris | 56h |  |
| 29 | 24 | Shop Concept | manual | 3d | 2010-06-30 A | 2010-07-02 A |  | 100% |  |  |  |  | Aaron | 24h | 24h |
| 30 | 25 | Shot Model |  | 3d | 2010-07-05 A | 2010-07-07 A | 29 | 100% |  |  |  |  | Carlos | 24h | 24h |
| 31 | 26 | Shop Textures |  | 3d | 2010-07-08 A | 2010-07-12 | 30 | 67% | 1d | 94d |  |  | Texture Artist 2 | 24h | 16h |
| 32 | 27 | Shop Animation |  | 2d | 2010-07-08 | 2010-07-09 | 30 |  |  | 93d | 0d |  | Jeremy | 16h |  |
| 33 | 28 | Shop Effects |  | 2d | 2010-07-12 | 2010-07-13 | 32 |  |  | 93d |  |  | TD 2 | 16h |  |
| 35 | 29 | Hero 1 Concept | manual | 4d | 2010-07-12 | 2010-07-15 |  |  |  |  |  | start no earlier than 2010-07-12 | Bruce | 32h |  |
| 36 | 30 | Hero 1 Armor Concepts |  | 4d | 2010-07-16 | 2010-07-21 | 35 |  |  | 19d | 3d |  | Bruce | 32h |  |
| 37 | 31 | Hero 1 Model |  | 4d | 2010-07-16 | 2010-07-21 | 35 |  |  | 75d | 0d |  | Evan | 32h |  |
| 38 | 32 | Armor Set 1 Model |  | 4d | 2010-07-22 | 2010-07-27 | 37 |  |  | 75d | 0d |  | Evan | 32h |  |
| 39 | 33 | Hero 1 Skin A |  | 3d | 2010-07-22 | 2010-07-26 | 37 |  |  | 79d | 0d |  | Ari | 24h |  |
| 40 | 34 | Hero 1 Skin B |  | 2d | 2010-07-27 | 2010-07-28 | 39 |  |  | 79d | 0d |  | Ari | 16h |  |
| 41 | 35 | Hero 1 Skin C |  | 2d | 2010-07-29 | 2010-07-30 | 40 |  |  | 79d | 0d |  | Ari | 16h |  |
| 42 | 36 | Hero 1 Icon Set |  | 1d | 2010-08-02 | 2010-08-02 | 41 |  |  | 79d |  |  | Ari | 8h |  |
| 43 | 37 | Hero 1 Animations |  | 8d | 2010-07-28 | 2010-08-06 | 38 |  |  | 75d |  |  | Alonso | 64h |  |
| 44 | 38 | Hero 1 Effects |  | 7d | 2010-07-28 | 2010-08-05 | 38 |  |  | 76d |  |  | Kris | 56h |  |
| 46 | 39 | Hero 2 Concept | manual | 4d | 2010-07-26 | 2010-07-29 |  |  |  |  |  | start no earlier than 2010-07-26 | Aaron | 32h |  |
| 47 | 40 | Hero 2 Armor Concepts |  | 4d | 2010-07-30 | 2010-08-04 | 46 |  |  | 0d |  |  | Aaron | 32h |  |
| 48 | 41 | Hero 2 Model |  | 4d | 2010-07-30 | 2010-08-04 | 46 |  |  | 66d | 0d |  | Carlos | 32h |  |
| 49 | 42 | Armor Set 2 Model |  | 4d | 2010-08-05 | 2010-08-10 | 48 |  |  | 66d | 0d |  | Carlos | 32h |  |
| 50 | 43 | Hero 2 Skin A |  | 3d | 2010-08-05 | 2010-08-09 | 48 |  |  | 69d | 0d |  | Texture Artist 2 | 24h |  |
| 51 | 44 | Hero 2 Skin B |  | 2d | 2010-08-10 | 2010-08-11 | 50 |  |  | 69d | 0d |  | Texture Artist 2 | 16h |  |
| 52 | 45 | Hero 2 Skin C |  | 2d | 2010-08-12 | 2010-08-13 | 51 |  |  | 69d | 0d |  | Texture Artist 2 | 16h |  |
| 53 | 46 | Hero 2 Icon Set |  | 1d | 2010-08-16 | 2010-08-16 | 52 |  |  | 69d |  |  | Texture Artist 2 | 8h |  |
| 54 | 47 | Hero 2 Animations |  | 7d | 2010-08-11 | 2010-08-19 | 49 |  |  | 66d |  |  | Jeremy | 56h |  |
| 55 | 48 | Hero 2 Effects |  | 7d | 2010-08-11 | 2010-08-19 | 49 |  |  | 66d |  |  | TD 2 | 56h |  |
| 57 | 49 | Melee Creep Concept | manual | 4d | 2010-07-06 A | 2010-07-09 A |  | 100% |  |  |  | start no earlier than 2010-07-06 | Aaron | 32h | 32h |
| 58 | 50 | Melee Creep Model |  | 3d | 2010-07-12 | 2010-07-14 | 57 |  |  | 84d | 0d |  | Carlos | 24h |  |
| 59 | 51 | Melee Creep Texture |  | 3d | 2010-07-15 | 2010-07-19 | 58 |  |  | 89d |  |  | Texture Artist 2 | 24h |  |
| 60 | 52 | Melee Creep Animations |  | 5d | 2010-07-15 | 2010-07-21 | 58 |  |  | 84d | 0d |  | Jeremy | 40h |  |
| 61 | 53 | Melee Creep Effects |  | 3d | 2010-07-22 | 2010-07-26 | 58, 60 |  |  | 84d |  |  | TD 2 | 24h |  |
| 63 | 54 | Ranged Creep Concept | manual | 4d | 2010-07-13 | 2010-07-16 |  |  |  |  |  | start no earlier than 2010-07-13 | Aaron | 32h |  |
| 64 | 55 | Ranged Creep Model |  | 3d | 2010-07-19 | 2010-07-21 | 63 |  |  | 79d | 0d |  | Carlos | 24h |  |
| 65 | 56 | Ranged Creep Texture |  | 3d | 2010-07-22 | 2010-07-26 | 64 |  |  | 84d |  |  | Texture Artist 2 | 24h |  |
| 66 | 57 | Ranged Creep Animations |  | 5d | 2010-07-22 | 2010-07-28 | 64 |  |  | 79d | 0d |  | Jeremy | 40h |  |
| 67 | 58 | Ranged Creep Effects |  | 3d | 2010-07-29 | 2010-08-02 | 64, 66 |  |  | 79d |  |  | TD 2 | 24h |  |
| 69 | 59 | Siege Creep Concept | manual | 4d | 2010-07-19 | 2010-07-22 |  |  |  |  |  | start no earlier than 2010-07-19 | Aaron | 32h |  |
| 70 | 60 | Siege Creep Model |  | 4d | 2010-07-23 | 2010-07-28 | 69 |  |  | 74d | 0d |  | Carlos | 32h |  |
| 71 | 61 | Siege Creep Texture |  | 3d | 2010-07-29 | 2010-08-02 | 70 |  |  | 79d |  |  | Texture Artist 2 | 24h |  |
| 72 | 62 | Siege Creep Animations |  | 5d | 2010-07-29 | 2010-08-04 | 70 |  |  | 74d | 0d |  | Jeremy | 40h |  |
| 73 | 63 | Siege Creep Effects |  | 3d | 2010-08-05 | 2010-08-09 | 70, 72 |  |  | 74d |  |  | TD 2 | 24h |  |
| 75 | 64 | Hero 3 Concept |  | 4d | 2010-07-27 | 2010-07-30 | 36 |  |  | 16d | 0d | start no earlier than 2010-07-27 | Bruce | 32h |  |
| 76 | 65 | Hero 3 Armor Concepts |  | 4d | 2010-08-02 | 2010-08-05 | 75 |  |  | 16d | 0d |  | Bruce | 32h |  |
| 77 | 66 | Hero 3 Model |  | 4d | 2010-08-02 | 2010-08-05 | 75 |  |  | 64d | 0d |  | Evan | 32h |  |
| 78 | 67 | Armor Set 3 Model |  | 4d | 2010-08-06 | 2010-08-11 | 77 |  |  | 64d | 0d |  | Evan | 32h |  |
| 79 | 68 | Hero 3 Skin A |  | 3d | 2010-08-06 | 2010-08-10 | 77 |  |  | 68d | 0d |  | Ari | 24h |  |
| 80 | 69 | Hero 3 Skin B |  | 2d | 2010-08-11 | 2010-08-12 | 79 |  |  | 68d | 0d |  | Ari | 16h |  |
| 81 | 70 | Hero 3 Skin C |  | 2d | 2010-08-13 | 2010-08-16 | 80 |  |  | 68d | 0d |  | Ari | 16h |  |

| ID | WBS | Task | Type | Duration | Start | Finish | Predecessors | Total slack | Free slack | Constraint | Resources | Work |
| --- | --- | --- | --- | --- | --- | --- | --- | --- | --- | --- | --- | --- |
| 82 | 71 | Hero 3 Icon Set |  | 1d | 2010-08-17 | 2010-08-17 | 81 | 68d |  |  | Ari | 8h |
| 83 | 72 | Hero 3 Animations |  | 8d | 2010-08-12 | 2010-08-23 | 78 | 64d |  |  | Alonso | 64h |
| 84 | 73 | Hero 3 Effects |  | 7d | 2010-08-12 | 2010-08-20 | 78 | 65d |  |  | Kris | 56h |
| 86 | 74 | Guardian 1 Concept |  | 4d | 2010-08-05 | 2010-08-10 | 47 | 0d |  |  | Aaron | 32h |
| 87 | 75 | Guardian 1 Model |  | 4d | 2010-08-11 | 2010-08-16 | 86 | 61d | 0d |  | Carlos | 32h |
| 88 | 76 | Guardian 1 Texture |  | 4d | 2010-08-17 | 2010-08-20 | 87 | 65d |  |  | Texture Artist 2 | 32h |
| 89 | 77 | Guardian 1 Animation |  | 4d | 2010-08-23 | 2010-08-26 | 87 | 57d | 7d | start no earlier than 2010-08-23 | Jeremy | 32h |
| 90 | 78 | Guardian 1 Effects |  | 4d | 2010-09-07 | 2010-09-10 | 89 | 50d |  | start no earlier than 2010-09-07 | TD 2 | 32h |
| 92 | 79 | Hero 4 Concept |  | 4d | 2010-08-06 | 2010-08-11 | 76 | 16d | 0d | start no earlier than 2010-08-06 | Bruce | 32h |
| 93 | 80 | Hero 4 Armor Concepts |  | 4d | 2010-08-12 | 2010-08-17 | 92 | 16d | 0d |  | Bruce | 32h |
| 94 | 81 | Hero 4 Model |  | 4d | 2010-08-12 | 2010-08-17 | 92 | 56d | 0d |  | Evan | 32h |
| 95 | 82 | Armor Set 4 Model |  | 4d | 2010-08-18 | 2010-08-23 | 94 | 56d | 0d |  | Evan | 32h |
| 96 | 83 | Hero 4 Skin A |  | 3d | 2010-08-18 | 2010-08-20 | 94 | 60d | 0d |  | Ari | 24h |
| 97 | 84 | Hero 4 Skin B |  | 2d | 2010-08-23 | 2010-08-24 | 96 | 60d | 0d |  | Ari | 16h |
| 98 | 85 | Hero 4 Skin C |  | 2d | 2010-08-25 | 2010-08-26 | 97 | 60d | 0d |  | Ari | 16h |
| 99 | 86 | Hero 4 Icon Set |  | 1d | 2010-08-27 | 2010-08-27 | 98 | 60d |  |  | Ari | 8h |
| 100 | 87 | Hero 4 Animations |  | 8d | 2010-08-24 | 2010-09-02 | 95 | 56d |  |  | Alonso | 64h |
| 101 | 88 | Hero 4 Effects |  | 7d | 2010-08-24 | 2010-09-01 | 95 | 57d |  |  | Kris | 56h |
| 103 | 89 | Manually Scheduled |  | 4d | 2010-08-11 | 2010-08-16 | 86 | 0d |  | start no earlier than 2010-08-02 | Aaron | 32h |
| 104 | 90 | Hero 5 Armor Concepts |  | 4d | 2010-08-17 | 2010-08-20 | 103 | 0d |  |  | Aaron | 32h |
| 105 | 91 | Hero 5 Model |  | 4d | 2010-08-17 | 2010-08-20 | 103 | 54d | 0d |  | Carlos | 32h |
| 106 | 92 | Armor Set 5 Model |  | 4d | 2010-08-23 | 2010-08-26 | 105 | 54d | 0d |  | Carlos | 32h |
| 107 | 93 | Hero 5 Skin A |  | 3d | 2010-08-23 | 2010-08-25 | 105 | 57d | 0d |  | Texture Artist 2 | 24h |
| 108 | 94 | Hero 5 Skin B |  | 2d | 2010-08-26 | 2010-08-27 | 107 | 57d | 0d |  | Texture Artist 2 | 16h |
| 109 | 95 | Hero 5 Skin C |  | 2d | 2010-08-30 | 2010-08-31 | 108 | 57d | 0d |  | Texture Artist 2 | 16h |
| 110 | 96 | Hero 5 Icon Set |  | 1d | 2010-09-01 | 2010-09-01 | 109 | 57d |  |  | Texture Artist 2 | 8h |
| 111 | 97 | Hero 5 Animations |  | 7d | 2010-08-27 | 2010-09-06 | 106 | 54d |  |  | Jeremy | 56h |
| 112 | 98 | Hero 5 Effects |  | 7d | 2010-08-27 | 2010-09-06 | 106 | 54d |  | start no earlier than 2010-08-23 | TD 2 | 56h |
| 114 | 99 | Kongor 1 Concept | manual | 7d | 2010-08-23 | 2010-08-31 | 104 |  |  |  | Aaron | 56h |
| 115 | 100 | Kongor 1 Model |  | 4d | 2010-09-01 | 2010-09-06 | 114 | 0d |  |  | Carlos | 32h |
| 116 | 101 | Kongor 1 Icons | manual | 1d | 2010-09-06 | 2010-09-06 | 114 |  |  |  | Texture Artist 2 | 8h |
| 117 | 102 | Kongor 1 Texture |  | 4d | 2010-09-07 | 2010-09-10 | 116 | 50d |  | start no earlier than 2010-09-07 | Texture Artist 2 | 32h |
| 118 | 103 | Kongor 1 Animation |  | 4d | 2010-09-07 | 2010-09-10 | 115 | 46d | 0d | start no earlier than 2010-08-27 | Jeremy | 32h |
| 119 | 104 | Kongor 1 Effects |  | 4d | 2010-09-13 | 2010-09-16 | 118 | 46d |  |  | TD 2 | 32h |
| 121 | 105 | Kongor 2 Concept |  | 4d | 2010-09-01 | 2010-09-06 | 114 | 42d | 0d |  | Aaron | 32h |
| 122 | 106 | Kongor 2 Model |  | 4d | 2010-09-07 | 2010-09-10 | 121 | 42d | 0d |  | Carlos | 32h |
| 123 | 107 | Kongor 2 Texture |  | 4d | 2010-09-13 | 2010-09-16 | 122 | 45d | 0d |  | Texture Artist 2 | 32h |
| 124 | 108 | Kongor 2 Icons |  | 1d | 2010-09-17 | 2010-09-17 | 123 | 45d |  |  | Texture Artist 2 | 8h |
| 125 | 109 | Kongor 2 Animation |  | 4d | 2010-09-13 | 2010-09-16 | 122 | 42d | 0d | start no earlier than 2010-09-02 | Jeremy | 32h |
| 126 | 110 | Kongor 2 Effects |  | 4d | 2010-09-17 | 2010-09-22 | 125 | 42d |  |  | TD 2 | 32h |
| 128 | 111 | Hero 6 Concept |  | 4d | 2010-08-18 | 2010-08-23 | 93 | 16d | 0d | start no earlier than 2010-08-18 | Bruce | 32h |
| 129 | 112 | Hero 6 Armor Concepts |  | 4d | 2010-08-24 | 2010-08-27 | 128 | 16d | 0d |  | Bruce | 32h |
| 130 | 113 | Hero 6 Model |  | 4d | 2010-08-24 | 2010-08-27 | 128 | 48d | 0d |  | Evan | 32h |
| 131 | 114 | Armor Set 6 Model |  | 4d | 2010-08-30 | 2010-09-02 | 130 | 48d | 0d |  | Evan | 32h |
| 132 | 115 | Hero 6 Skin A |  | 3d | 2010-08-30 | 2010-09-01 | 130 | 52d | 0d |  | Ari | 24h |
| 133 | 116 | Hero 6 Skin B |  | 2d | 2010-09-02 | 2010-09-03 | 132 | 52d | 0d |  | Ari | 16h |
| 134 | 117 | Hero 6 Skin C |  | 2d | 2010-09-06 | 2010-09-07 | 133 | 52d | 0d |  | Ari | 16h |
| 135 | 118 | Hero 6 Icon Set |  | 1d | 2010-09-08 | 2010-09-08 | 134 | 52d |  |  | Ari | 8h |
| 136 | 119 | Hero 6 Animations |  | 8d | 2010-09-03 | 2010-09-14 | 131 | 48d |  |  | Alonso | 64h |
| 137 | 120 | Hero 6 Effects |  | 7d | 2010-09-03 | 2010-09-13 | 131 | 49d |  |  | Kris | 56h |
| 139 | 121 | Hero 7 Concept Pet Designs |  | 7d | 2010-09-07 | 2010-09-15 | 115 | 0d |  | start no earlier than 2010-08-27 | Aaron | 56h |
| 140 | 122 | Hero 7 Armor Concepts |  | 4d | 2010-09-16 | 2010-09-21 | 139 | 0d |  |  | Aaron | 32h |
| 141 | 123 | Hero 7 Model |  | 4d | 2010-09-16 | 2010-09-21 | 139 | 32d | 0d |  | Carlos | 32h |
| 142 | 124 | Armor Set 7 Model |  | 4d | 2010-09-22 | 2010-09-27 | 141 | 32d | 0d |  | Carlos | 32h |
| 143 | 125 | Hero 7 Skin A |  | 3d | 2010-09-22 | 2010-09-24 | 141 | 35d | 0d |  | Texture Artist 2 | 24h |
| 144 | 126 | Hero 7 Skin B |  | 2d | 2010-09-27 | 2010-09-28 | 143 | 35d | 0d |  | Texture Artist 2 | 16h |
| 145 | 127 | Hero 7 Skin C |  | 2d | 2010-09-29 | 2010-09-30 | 144 | 35d | 0d |  | Texture Artist 2 | 16h |
| 146 | 128 | Hero 7 Icon Set |  | 1d | 2010-10-01 | 2010-10-01 | 145 | 35d |  |  | Texture Artist 2 | 8h |
| 147 | 129 | Hero 7 Animations |  | 7d | 2010-09-28 | 2010-10-06 | 142 | 32d |  |  | Jeremy | 56h |
| 148 | 130 | Hero 7 Effects |  | 7d | 2010-09-28 | 2010-10-06 | 142 | 32d |  | start no earlier than 2010-08-23 | TD 2 | 56h |
| 150 | 131 | Hero 8 Concept |  | 4d | 2010-08-30 | 2010-09-02 | 129 | 16d | 0d | start no earlier than 2010-08-30 | Bruce | 32h |
| 151 | 132 | Hero 8 Armor Concepts |  | 4d | 2010-09-03 | 2010-09-08 | 150 | 16d | 0d |  | Bruce | 32h |
| 152 | 133 | Hero 8 Model |  | 4d | 2010-09-03 | 2010-09-08 | 150 | 40d | 0d |  | Evan | 32h |
| 153 | 134 | Armor Set 8 Model |  | 4d | 2010-09-09 | 2010-09-14 | 152 | 40d | 0d |  | Evan | 32h |
| 154 | 135 | Hero 8 Skin A |  | 3d | 2010-09-09 | 2010-09-13 | 152 | 44d | 0d |  | Ari | 24h |
| 155 | 136 | Hero 8 Skin B |  | 2d | 2010-09-14 | 2010-09-15 | 154 | 44d | 0d |  | Ari | 16h |
| 156 | 137 | Hero 8 Skin C |  | 2d | 2010-09-16 | 2010-09-17 | 155 | 44d | 0d |  | Ari | 16h |
| 157 | 138 | Hero 8 Icon Set |  | 1d | 2010-09-20 | 2010-09-20 | 156 | 44d |  |  | Ari | 8h |
| 158 | 139 | Hero 8 Animations |  | 8d | 2010-09-15 | 2010-09-24 | 153 | 40d |  |  | Alonso | 64h |
| 159 | 140 | Hero 8 Effects |  | 7d | 2010-09-15 | 2010-09-23 | 153 | 41d |  |  | Kris | 56h |

| ID | WBS | Task | Duration | Start | Finish | Predecessors | Total slack | Free slack | Constraint | Resources | Work |
| --- | --- | --- | --- | --- | --- | --- | --- | --- | --- | --- | --- |
| 161 | 141 | Hero 9 Concept | 4d | 2010-09-22 | 2010-09-27 | 140 | 0d |  | start no earlier than 2010-09-08 | Aaron | 32h |
| 162 | 142 | Hero 9 Armor Concepts | 4d | 2010-09-28 | 2010-10-01 | 161 | 0d |  |  | Aaron | 32h |
| 163 | 143 | Hero 9 Model | 4d | 2010-09-28 | 2010-10-01 | 161 | 24d | 0d |  | Carlos | 32h |
| 164 | 144 | Armor Set 9 Model | 4d | 2010-10-04 | 2010-10-07 | 163 | 24d | 0d |  | Carlos | 32h |
| 165 | 145 | Hero 9 Skin A | 3d | 2010-10-04 | 2010-10-06 | 163 | 27d | 0d |  | Texture Artist 2 | 24h |
| 166 | 146 | Hero 9 Skin B | 2d | 2010-10-07 | 2010-10-08 | 165 | 27d | 0d |  | Texture Artist 2 | 16h |
| 167 | 147 | Hero 9 Skin C | 2d | 2010-10-11 | 2010-10-12 | 166 | 27d | 0d |  | Texture Artist 2 | 16h |
| 168 | 148 | Hero 9 Icon Set | 1d | 2010-10-13 | 2010-10-13 | 167 | 27d |  |  | Texture Artist 2 | 8h |
| 169 | 149 | Hero 9 Animations | 7d | 2010-10-08 | 2010-10-18 | 164 | 24d |  |  | Jeremy | 56h |
| 170 | 150 | Hero 9 Effects | 7d | 2010-10-08 | 2010-10-18 | 164 | 24d |  | start no earlier than 2010-08-23 | TD 2 | 56h |
| 172 | 151 | Hero 10 Concept | 4d | 2010-09-09 | 2010-09-14 | 151 | 16d | 0d | start no earlier than 2010-09-09 | Bruce | 32h |
| 173 | 152 | Hero 10 Armor Concepts | 4d | 2010-09-15 | 2010-09-20 | 172 | 16d | 0d |  | Bruce | 32h |
| 174 | 153 | Hero 10 Model | 4d | 2010-09-15 | 2010-09-20 | 172 | 32d | 0d |  | Evan | 32h |
| 175 | 154 | Armor Set 10 Model | 4d | 2010-09-21 | 2010-09-24 | 174 | 32d | 0d |  | Evan | 32h |
| 176 | 155 | Hero 10 Skin A | 3d | 2010-09-21 | 2010-09-23 | 174 | 36d | 0d |  | Ari | 24h |
| 177 | 156 | Hero 10 Skin B | 2d | 2010-09-24 | 2010-09-27 | 176 | 36d | 0d |  | Ari | 16h |
| 178 | 157 | Hero 10 Skin C | 2d | 2010-09-28 | 2010-09-29 | 177 | 36d | 0d |  | Ari | 16h |
| 179 | 158 | Hero 10 Icon Set | 1d | 2010-09-30 | 2010-09-30 | 178 | 36d |  |  | Ari | 8h |
| 180 | 159 | Hero 10 Animations | 8d | 2010-09-27 | 2010-10-06 | 175 | 32d |  |  | Alonso | 64h |
| 181 | 160 | Hero 10 Effects | 7d | 2010-09-27 | 2010-10-05 | 175 | 33d |  |  | Kris | 56h |
| 183 | 161 | Hero 11 Concept | 4d | 2010-10-04 | 2010-10-07 | 162 | 0d |  | start no earlier than 2010-09-20 | Aaron | 32h |
| 184 | 162 | Hero 11 Armor Concepts | 4d | 2010-10-08 | 2010-10-13 | 183 | 0d |  |  | Aaron | 32h |
| 185 | 163 | Hero 11 Model | 4d | 2010-10-08 | 2010-10-13 | 183 | 16d | 0d |  | Carlos | 32h |
| 186 | 164 | Armor Set 11 Model | 4d | 2010-10-14 | 2010-10-19 | 185 | 16d | 0d |  | Carlos | 32h |
| 187 | 165 | Hero 11 Skin A | 3d | 2010-10-14 | 2010-10-18 | 185 | 19d | 0d |  | Texture Artist 2 | 24h |
| 188 | 166 | Hero 11 Skin B | 2d | 2010-10-19 | 2010-10-20 | 187 | 19d | 0d |  | Texture Artist 2 | 16h |
| 189 | 167 | Hero 11 Skin C | 2d | 2010-10-21 | 2010-10-22 | 188 | 19d | 0d |  | Texture Artist 2 | 16h |
| 190 | 168 | Hero 11 Icon Set | 1d | 2010-10-25 | 2010-10-25 | 189 | 19d |  |  | Texture Artist 2 | 8h |
| 191 | 169 | Hero 11 Animations | 7d | 2010-10-20 | 2010-10-28 | 186 | 16d |  |  | Jeremy | 56h |
| 192 | 170 | Hero 11 Effects | 7d | 2010-10-20 | 2010-10-28 | 186 | 16d |  | start no earlier than 2010-08-23 | TD 2 | 56h |
| 194 | 171 | Hero 12 Concept | 4d | 2010-09-21 | 2010-09-24 | 173 | 16d | 0d | start no earlier than 2010-09-21 | Bruce | 32h |
| 195 | 172 | Hero 12 Armor Concepts | 4d | 2010-09-27 | 2010-09-30 | 194 | 16d | 0d |  | Bruce | 32h |
| 196 | 173 | Hero 12 Model | 4d | 2010-09-27 | 2010-09-30 | 194 | 24d | 0d |  | Evan | 32h |
| 197 | 174 | Armor Set 12 Model | 4d | 2010-10-01 | 2010-10-06 | 196 | 24d | 0d |  | Evan | 32h |
| 198 | 175 | Hero 12 Skin A | 3d | 2010-10-01 | 2010-10-05 | 196 | 28d | 0d |  | Ari | 24h |
| 199 | 176 | Hero 12 Skin B | 2d | 2010-10-06 | 2010-10-07 | 198 | 28d | 0d |  | Ari | 16h |
| 200 | 177 | Hero 12 Skin C | 2d | 2010-10-08 | 2010-10-11 | 199 | 28d | 0d |  | Ari | 16h |
| 201 | 178 | Hero 12 Icon Set | 1d | 2010-10-12 | 2010-10-12 | 200 | 28d |  |  | Ari | 8h |
| 202 | 179 | Hero 12 Animations | 8d | 2010-10-07 | 2010-10-18 | 197 | 24d |  |  | Alonso | 64h |
| 203 | 180 | Hero 12 Effects | 7d | 2010-10-07 | 2010-10-15 | 197 | 25d |  |  | Kris | 56h |
| 205 | 181 | Hero 13 Concept | 4d | 2010-10-14 | 2010-10-19 | 184 | 0d |  | start no earlier than 2010-09-30 | Aaron | 32h |
| 206 | 182 | Hero 13 Armor Concepts | 4d | 2010-10-20 | 2010-10-25 | 205 | 0d |  |  | Aaron | 32h |
| 207 | 183 | Hero 13 Model | 4d | 2010-10-20 | 2010-10-25 | 205 | 8d | 0d |  | Carlos | 32h |
| 208 | 184 | Armor Set 13 Model | 4d | 2010-10-26 | 2010-10-29 | 207 | 8d | 0d |  | Carlos | 32h |
| 209 | 185 | Hero 13 Skin A | 3d | 2010-10-26 | 2010-10-28 | 207 | 11d | 0d |  | Texture Artist 2 | 24h |
| 210 | 186 | Hero 13 Skin B | 2d | 2010-10-29 | 2010-11-01 | 209 | 11d | 0d |  | Texture Artist 2 | 16h |
| 211 | 187 | Hero 13 Skin C | 2d | 2010-11-02 | 2010-11-03 | 210 | 11d | 0d |  | Texture Artist 2 | 16h |
| 212 | 188 | Hero 13 Icon Set | 1d | 2010-11-04 | 2010-11-04 | 211 | 11d |  |  | Texture Artist 2 | 8h |
| 213 | 189 | Hero 13 Animations | 7d | 2010-11-01 | 2010-11-09 | 208 | 8d |  |  | Jeremy | 56h |
| 214 | 190 | Hero 13 Effects | 7d | 2010-11-01 | 2010-11-09 | 208 | 8d |  | start no earlier than 2010-08-23 | TD 2 | 56h |
| 216 | 191 | Hero 14 Concept | 4d | 2010-10-01 | 2010-10-06 | 195 | 16d | 0d | start no earlier than 2010-10-01 | Bruce | 32h |
| 217 | 192 | Hero 14 Armor Concepts | 4d | 2010-10-07 | 2010-10-12 | 216 | 28d |  |  | Bruce | 32h |
| 218 | 193 | Hero 14 Model | 4d | 2010-10-07 | 2010-10-12 | 216 | 16d | 0d |  | Evan | 32h |
| 219 | 194 | Armor Set 14 Model | 4d | 2010-10-13 | 2010-10-18 | 218 | 16d | 0d |  | Evan | 32h |
| 220 | 195 | Hero 14 Skin A | 3d | 2010-10-13 | 2010-10-15 | 218 | 20d | 0d |  | Ari | 24h |
| 221 | 196 | Hero 14 Skin B | 2d | 2010-10-18 | 2010-10-19 | 220 | 20d | 0d |  | Ari | 16h |
| 222 | 197 | Hero 14 Skin C | 2d | 2010-10-20 | 2010-10-21 | 221 | 20d | 0d |  | Ari | 16h |
| 223 | 198 | Hero 14 Icon Set | 1d | 2010-10-22 | 2010-10-22 | 222 | 20d |  |  | Ari | 8h |
| 224 | 199 | Hero 14 Animations | 8d | 2010-10-19 | 2010-10-28 | 219 | 16d |  |  | Alonso | 64h |
| 225 | 200 | Hero 14 Effects | 7d | 2010-10-19 | 2010-10-27 | 219 | 17d |  |  | Kris | 56h |
| 227 | 201 | Hero 15 Concept | 4d | 2010-10-26 | 2010-10-29 | 206 | 0d |  | start no earlier than 2010-10-12 | Aaron | 32h |
| 228 | 202 | Hero 15 Armor Concepts | 4d | 2010-11-01 | 2010-11-04 | 227 | 11d |  |  | Aaron | 32h |
| 229 | 203 | Hero 15 Model | 4d | 2010-11-01 | 2010-11-04 | 227 | 0d |  |  | Carlos | 32h |
| 230 | 204 | Armor Set 15 Model | 4d | 2010-11-05 | 2010-11-10 | 229 | 0d |  |  | Carlos | 32h |
| 231 | 205 | Hero 15 Skin A | 3d | 2010-11-05 | 2010-11-09 | 229 | 3d | 0d |  | Texture Artist 2 | 24h |
| 232 | 206 | Hero 15 Skin B | 2d | 2010-11-10 | 2010-11-11 | 231 | 3d | 0d |  | Texture Artist 2 | 16h |
| 233 | 207 | Hero 15 Skin C | 2d | 2010-11-12 | 2010-11-15 | 232 | 3d | 0d |  | Texture Artist 2 | 16h |
| 234 | 208 | Hero 15 Icon Set | 1d | 2010-11-16 | 2010-11-16 | 233 | 3d |  |  | Texture Artist 2 | 8h |
| 235 | 209 | Hero 15 Animations | 7d | 2010-11-11 | 2010-11-19 | 230 | 0d |  |  | Jeremy | 56h |
| 236 | 210 | Hero 15 Effects | 7d | 2010-11-11 | 2010-11-19 | 230 | 0d |  | start no earlier than 2010-08-23 | TD 2 | 56h |

| ID | WBS | Task | Type | Duration | Start | Finish | Predecessors | Total slack | Free slack | Resources | Work |
| --- | --- | --- | --- | --- | --- | --- | --- | --- | --- | --- | --- |
| 238 | 211 | Tower 2 Concept | manual | 4d | 2010-10-20 | 2010-10-25 |  |  |  | Bruce | 32h |
| 239 | 212 | Tower 2 Model |  | 3d | 2010-10-26 | 2010-10-28 | 238 | 11d | 0d | Evan | 24h |
| 240 | 213 | Tower 3 Texture |  | 4d | 2010-10-29 | 2010-11-03 | 239 | 12d |  | Ari | 32h |
| 241 | 214 | Tower 3 Animation |  | 2d | 2010-10-29 | 2010-11-01 | 239 | 11d | 0d | Alonso | 16h |
| 242 | 215 | Tower 3 Effects |  | 3d | 2010-11-02 | 2010-11-04 | 241 | 11d |  | Kris | 24h |
| 244 | 216 | Tower 2 Concept | manual | 4d | 2010-10-26 | 2010-10-29 |  |  |  | Bruce | 32h |
| 245 | 217 | Tower 2 Model |  | 3d | 2010-11-01 | 2010-11-03 | 244 | 7d | 0d | Evan | 24h |
| 246 | 218 | Tower 3 Texture |  | 4d | 2010-11-04 | 2010-11-09 | 245 | 8d |  | Ari | 32h |
| 247 | 219 | Tower 3 Animation |  | 2d | 2010-11-04 | 2010-11-05 | 245 | 7d | 0d | Alonso | 16h |
| 248 | 220 | Tower 3 Effects |  | 3d | 2010-11-08 | 2010-11-10 | 247 | 7d |  | Kris | 24h |
| 255 | 221 | Pet 1 Concept | manual | 1d | 2010-07-22 | 2010-07-22 |  |  |  | Bruce | 8h |
| 256 | 222 | Pet 1 Model | manual | 1d | 2010-07-28 | 2010-07-28 |  |  |  | Evan | 8h |
| 257 | 223 | Pet 1 Texture | manual | 3d | 2010-08-03 | 2010-08-05 |  |  |  | Ari | 24h |
| 258 | 224 | Pet 1 Animation | manual | 2d | 2010-08-09 | 2010-08-10 |  |  |  | Alonso | 16h |
| 260 | 225 | Pet 2 Concept | manual | 1d | 2010-07-05 | 2010-07-05 |  |  |  | Aaron | 8h |
| 261 | 226 | Pet 2 Model | manual | 1d | 2010-07-08 | 2010-07-08 |  |  |  | Carlos | 8h |
| 262 | 227 | Pet 2 Texture | manual | 3d | 2010-07-05 | 2010-07-07 |  |  |  | Texture Artist 2 | 24h |
| 263 | 228 | Pet 2 Animation | manual | 2d | 2010-07-12 | 2010-07-13 |  |  |  | Jeremy | 16h |
