# Savage 2

Schedule from MS Project, 2005-04-28 to 2006-08-24, A marks actual dates.

## Calendars

- Standard: Mon-Fri 08:00-12:00, 13:00-17:00; Sat-Sun off.

## Resources

| Resource |
| --- |
| Jesse Hayes |
| Jason Morales |
| Jason Gripp |
| Adam Barroody |
| Enrico CCRat |
| Stoof |
| Mike Mills |
| Contract Artist A |
| Contract Artist B |
| Contract Artist C |
| Animator A |
| Animator B |
| Willie Real |

## Schedule

| ID | WBS | Task | Duration | Start | Finish | Predecessors | Complete | Remaining | Total slack | Constraint | Deadline | Resources | Work | Actual work |
| --- | --- | --- | --- | --- | --- | --- | --- | --- | --- | --- | --- | --- | --- | --- |
| 1 | 1 | **All Art Related Work** | 320d | 2005-04-28 A | 2006-07-19 |  | 10% | 288.68d | 26d |  |  |  | 3392h | 368h |
| 2 | 1.1 | **Human Player Characters Art Assets** | 132d | 2005-04-28 A | 2005-10-28 |  | 63% | 48.89d | 0d |  |  |  | 352h | 272h |
| 3 | 1.1.1 | Builder Art Assets | 6d | 2005-04-28 A | 2005-05-05 A |  | 100% |  |  | start no earlier than 2005-04-28 |  | Jesse Hayes | 48h | 48h |
| 4 | 1.1.2 | Scout Art Assets | 9d | 2005-05-06 A | 2005-05-18 A | 3 | 100% |  |  |  |  | Jesse Hayes | 72h | 72h |
| 5 | 1.1.3 | Savage Art Assets | 5d | 2005-05-19 A | 2005-05-25 A | 4 | 100% |  |  |  |  | Jesse Hayes | 40h | 40h |
| 6 | 1.1.4 | Legionnaire Art Assets | 7d | 2005-05-26 A | 2005-06-03 A | 5 | 100% |  |  |  |  | Jesse Hayes | 56h | 56h |
| 7 | 1.1.5 | Chaplain Art Assets | 7d | 2005-06-06 A | 2005-06-14 A | 6 | 100% |  |  |  |  | Jesse Hayes | 56h | 56h |
| 8 | 1.1.6 | Steambuchet Art Assets | 5d | 2005-10-03 | 2005-10-07 |  |  |  | 0d | start no earlier than 2005-10-03 |  | Jesse Hayes | 40h |  |
| 9 | 1.1.7 | Battering Ram Art Assets | 5d | 2005-10-10 | 2005-10-14 | 8 |  |  | 0d |  |  | Jesse Hayes | 40h |  |
| 10 | 1.1.8 | Human Player Polish | 10d | 2005-10-17 | 2005-10-28 | 9 |  |  | 0d |  |  |  |  |  |
| 11 | 1.2 | **Human Building Art Assets** | 52d | 2005-10-31 | 2006-01-10 |  |  |  | 0d |  |  |  | 416h |  |
| 12 | 1.2.1 | Stronghold Art Assets | 5d | 2005-10-31 | 2005-11-04 | 10 |  |  | 0d | start no earlier than 2005-06-29 |  | Jesse Hayes | 40h |  |
| 13 | 1.2.2 | Steam Mine Art Assets | 5d | 2005-11-07 | 2005-11-11 | 12 |  |  | 0d |  |  | Jesse Hayes | 40h |  |
| 14 | 1.2.3 | Armory Art Assets | 5d | 2005-11-14 | 2005-11-18 | 13 |  |  | 0d |  |  | Jesse Hayes | 40h |  |
| 15 | 1.2.4 | Siege Workshop Art Assets | 5d | 2005-11-21 | 2005-11-25 | 14 |  |  | 0d |  |  | Jesse Hayes | 40h |  |
| 16 | 1.2.5 | Academy Art Assets | 5d | 2005-11-28 | 2005-12-02 | 15 |  |  | 0d |  |  | Jesse Hayes | 40h |  |
| 17 | 1.2.6 | Monestary Art Assets | 5d | 2005-12-05 | 2005-12-09 | 16 |  |  | 0d |  |  | Jesse Hayes | 40h |  |
| 18 | 1.2.7 | Garrison Art Assets | 5d | 2005-12-12 | 2005-12-16 | 17 |  |  | 0d |  |  | Jesse Hayes | 40h |  |
| 19 | 1.2.8 | **Tower Art Assets** | 12d | 2005-12-19 | 2006-01-03 | 18 |  |  | 0d |  |  |  | 96h |  |
| 20 | 1.2.8.1 | Manable Tower Art Assets | 3d | 2005-12-19 | 2005-12-21 |  |  |  | 0d | start no earlier than 2005-04-26 | 2006-03-22 | Jesse Hayes | 24h |  |
| 21 | 1.2.8.2 | Arrow Tower Art Assets | 3d | 2005-12-22 | 2005-12-26 | 20 |  |  | 0d |  |  | Jesse Hayes | 24h |  |
| 22 | 1.2.8.3 | Shield Tower Art Assets | 3d | 2005-12-27 | 2005-12-29 | 21 |  |  | 0d |  |  | Jesse Hayes | 24h |  |
| 23 | 1.2.8.4 | Cannon Tower Art Assets | 3d | 2005-12-30 | 2006-01-03 | 22 |  |  | 0d |  |  | Jesse Hayes | 24h |  |
| 24 | 1.2.9 | Sacraficial Shrine Art Assets | 5d | 2006-01-04 | 2006-01-10 | 23 |  |  | 0d |  |  | Jesse Hayes | 40h |  |

| ID | WBS | Task | Duration | Start | Finish | Predecessors | Complete | Remaining | Total slack | Constraint | Resources | Work | Actual work |
| --- | --- | --- | --- | --- | --- | --- | --- | --- | --- | --- | --- | --- | --- |
| 25 | 1.3 | **Beast Player Characters Art Assets** | 88d | 2005-11-25 A | 2006-03-28 |  | 11% | 78.06d | 0d |  |  | 496h | 56h |
| 26 | 1.3.1 | Conjurer Art Assets | 7d | 2006-01-11 | 2006-01-19 | 24 |  |  | 0d | start no earlier than 2005-04-26 | Jesse Hayes | 56h |  |
| 27 | 1.3.2 | Shape Shifter Art Assets | 10d | 2006-01-20 | 2006-02-02 | 26 |  |  | 0d | start no earlier than 2005-04-26 | Jesse Hayes | 80h |  |
| 28 | 1.3.3 | Summoner Art Assets | 15d | 2006-02-03 | 2006-02-23 | 27 |  |  | 0d | start no earlier than 2005-04-26 | Jesse Hayes | 120h |  |
| 29 | 1.3.4 | Predator Art Assets | 7d | 2006-02-24 | 2006-03-06 | 28 |  |  | 0d | start no earlier than 2005-04-26 | Jesse Hayes | 56h |  |
| 30 | 1.3.5 | Shaman Art Assets | 7d | 2006-03-07 | 2006-03-15 | 29 |  |  | 0d | start no earlier than 2005-04-26 | Jesse Hayes | 56h |  |
| 31 | 1.3.6 | Tempest Art Assets | 9d | 2006-03-16 | 2006-03-28 | 30 |  |  | 0d | start no earlier than 2005-04-26 | Jesse Hayes | 72h |  |
| 32 | 1.3.7 | Behemoth Art Assets | 7d | 2005-11-25 A | 2005-12-05 A |  | 100% |  |  | start no earlier than 2005-04-26 | Jesse Hayes | 56h | 56h |
| 33 | 1.4 | **Beast Building Art Assets** | 52d | 2006-03-29 | 2006-06-08 |  |  |  | 0d |  |  | 416h |  |
| 34 | 1.4.1 | Lair Art Assets | 5d | 2006-03-29 | 2006-04-04 | 31 |  |  | 0d |  | Jesse Hayes | 40h |  |
| 35 | 1.4.2 | Mine Grove Art Assets | 5d | 2006-04-05 | 2006-04-11 | 34 |  |  | 0d |  | Jesse Hayes | 40h |  |
| 36 | 1.4.3 | Charm Shrine Art Assets | 5d | 2006-04-12 | 2006-04-18 | 35 |  |  | 0d |  | Jesse Hayes | 40h |  |
| 37 | 1.4.4 | Nexus Art Assets | 5d | 2006-04-19 | 2006-04-25 | 36 |  |  | 0d |  | Jesse Hayes | 40h |  |
| 38 | 1.4.5 | Predator's Den Art Assets | 5d | 2006-04-26 | 2006-05-02 | 37 |  |  | 0d |  | Jesse Hayes | 40h |  |
| 39 | 1.4.6 | Sanctuary Art Assets | 5d | 2006-05-03 | 2006-05-09 | 38 |  |  | 0d |  | Jesse Hayes | 40h |  |
| 40 | 1.4.7 | Sub Lair Art Assets | 5d | 2006-05-10 | 2006-05-16 | 39 |  |  | 0d |  | Jesse Hayes | 40h |  |
| 41 | 1.4.8 | **Spire Art Assets** | 12d | 2006-05-17 | 2006-06-01 |  |  |  | 0d |  |  | 96h |  |
| 42 | 1.4.8.1 | Chlorophilic Spire Art Assets | 3d | 2006-05-17 | 2006-05-19 | 40 |  |  | 0d |  | Jesse Hayes | 24h |  |
| 43 | 1.4.8.2 | Strata Spire Art Assets | 3d | 2006-05-22 | 2006-05-24 | 42 |  |  | 0d |  | Jesse Hayes | 24h |  |
| 44 | 1.4.8.3 | Manable Fire Spire Art Assets | 3d | 2006-05-25 | 2006-05-29 | 43 |  |  | 0d |  | Jesse Hayes | 24h |  |
| 45 | 1.4.8.4 | Entangling Spire Art Assets | 3d | 2006-05-30 | 2006-06-01 | 44 |  |  | 0d |  | Jesse Hayes | 24h |  |
| 46 | 1.4.9 | Sacraficial Shrine Art Assets | 5d | 2006-06-02 | 2006-06-08 | 45 |  |  | 0d |  | Jesse Hayes | 40h |  |
| 47 | 1.5 | **Hellbourne Player Character Art Assets** | 24d | 2006-06-09 | 2006-07-12 |  |  |  | 0d |  |  | 192h |  |
| 48 | 1.5.1 | Possessed Lego Art Assets | 3d | 2006-06-09 | 2006-06-13 | 46 |  |  | 0d | start no earlier than 2005-04-28 | Jesse Hayes | 24h |  |
| 49 | 1.5.2 | Possessed Pred Art Assets | 3d | 2006-06-14 | 2006-06-16 | 48 |  |  | 0d | start no earlier than 2005-04-28 | Jesse Hayes | 24h |  |
| 50 | 1.5.3 | Revenant Art Assets | 9d | 2006-06-19 | 2006-06-29 | 49 |  |  | 0d | start no earlier than 2005-04-28 | Jesse Hayes | 72h |  |
| 51 | 1.5.4 | Malphas Art Assets | 9d | 2006-06-30 | 2006-07-12 | 50 |  |  | 0d | start no earlier than 2005-04-28 | Jesse Hayes | 72h |  |

| ID | WBS | Task | Duration | Start | Finish | Predecessors | Complete | Remaining | Total slack | Free slack | Constraint | Resources | Work | Actual work |
| --- | --- | --- | --- | --- | --- | --- | --- | --- | --- | --- | --- | --- | --- | --- |
| 52 | 1.6 | **Human Weapon Art Assets** | 40d | 2005-05-12 | 2005-07-06 |  |  |  | 296d |  |  |  | 320h |  |
| 53 | 1.6.1 | Semi Auto Rifle Art Asset | 5d | 2005-05-12 | 2005-05-18 |  |  |  | 326d | 0d | start no earlier than 2005-05-12 | Enrico CCRat | 40h |  |
| 54 | 1.6.2 | Scattergun Art Asset | 5d | 2005-05-19 | 2005-05-25 | 53 |  |  | 326d |  |  | Enrico CCRat | 40h |  |
| 55 | 1.6.3 | Crossbow Art Asset | 5d | 2005-06-23 | 2005-06-29 | 65 |  |  | 296d | 0d | start no earlier than 2005-05-12 | Stoof | 40h |  |
| 56 | 1.6.4 | Sniper Bow Art Asset | 5d | 2005-06-30 | 2005-07-06 | 55 |  |  | 296d |  |  | Stoof | 40h |  |
| 57 | 1.6.5 | Auto Crossbow Art Asset | 5d | 2005-05-12 | 2005-05-18 |  |  |  | 326d | 0d | start no earlier than 2005-05-12 | Contract Artist A | 40h |  |
| 58 | 1.6.6 | Repeater Art Asset | 5d | 2005-05-19 | 2005-05-25 | 57 |  |  | 326d |  |  | Contract Artist A | 40h |  |
| 59 | 1.6.7 | Gernade Launcher Art Asset | 5d | 2005-05-12 | 2005-05-18 |  |  |  | 296d | 0d | start no earlier than 2005-05-12 | Adam Barroody | 40h |  |
| 60 | 1.6.8 | Rocket Launcher Art Asset | 5d | 2005-05-19 | 2005-05-25 | 59 |  |  | 296d | 0d |  | Adam Barroody | 40h |  |
| 61 | 1.7 | **NPC Modeling & Texturing** | 30d | 2005-05-26 A | 2005-07-06 |  | 17% | 25d | 296d |  |  |  | 240h | 40h |
| 62 | 1.7.1 | Golden Troll | 5d | 2005-05-26 A | 2005-06-01 A |  | 100% |  |  |  | start no earlier than 2005-05-11 | Enrico CCRat | 40h | 40h |
| 63 | 1.7.2 | Derko | 5d | 2005-06-02 | 2005-06-08 | 62 |  |  | 276d | 0d |  | Enrico CCRat | 40h |  |
| 64 | 1.7.3 | Ash Dragon | 5d | 2005-06-09 | 2005-06-15 | 63 |  |  | 276d | 0d | start no earlier than 2005-05-11 | Stoof | 40h |  |
| 65 | 1.7.4 | Earth | 5d | 2005-06-16 | 2005-06-22 | 64 |  |  | 296d | 0d |  | Stoof | 40h |  |
| 66 | 1.7.5 | Black Soldier | 5d | 2005-06-23 | 2005-06-29 | 90 |  |  | 296d | 0d | start no earlier than 2005-05-11 | Adam Barroody | 40h |  |
| 67 | 1.7.6 | Chained Leper | 5d | 2005-06-30 | 2005-07-06 | 66 |  |  | 296d |  |  | Adam Barroody | 40h |  |
| 68 | 1.8 | **NPC Animation** | 45d | 2005-06-02 | 2005-08-03 |  |  |  | 276d |  |  |  | 560h |  |
| 69 | 1.8.1 | Golden Troll | 5d | 2005-06-02 | 2005-06-08 | 62 |  |  | 286d | 0d |  | Animator A | 40h |  |
| 70 | 1.8.2 | Derko | 5d | 2005-06-09 | 2005-06-15 | 69 |  |  | 286d | 0d |  | Animator A | 40h |  |
| 71 | 1.8.3 | Ash Dragon | 5d | 2005-06-16 | 2005-06-22 | 64 |  |  | 276d | 0d |  | Animator B | 40h |  |
| 72 | 1.8.4 | Earth | 5d | 2005-06-23 | 2005-06-29 | 71 |  |  | 276d | 0d |  | Animator B | 40h |  |
| 73 | 1.8.5 | Black Soldier | 5d | 2005-06-16 | 2005-06-22 | 70 |  |  | 286d | 0d |  | Animator A | 40h |  |
| 74 | 1.8.6 | Chained Leper | 5d | 2005-06-23 | 2005-06-29 | 73 |  |  | 286d | 0d |  | Animator A | 40h |  |
| 75 | 1.8.7 | 3 Witches | 5d | 2005-06-30 | 2005-07-06 | 72 |  |  | 276d | 0d |  | Animator B | 40h |  |
| 76 | 1.8.8 | Abomination | 5d | 2005-07-07 | 2005-07-13 | 75 |  |  | 276d | 0d |  | Animator B | 40h |  |
| 77 | 1.8.9 | Dark Rogue | 5d | 2005-06-30 | 2005-07-06 | 74 |  |  | 286d | 0d |  | Animator A | 40h |  |
| 78 | 1.8.10 | Devrokas | 5d | 2005-07-07 | 2005-07-13 | 77 |  |  | 286d | 0d |  | Animator A | 40h |  |
| 79 | 1.8.11 | Dragon Rider | 5d | 2005-07-14 | 2005-07-20 | 76 |  |  | 276d | 0d |  | Animator B | 40h |  |
| 80 | 1.8.12 | Eyebolt | 5d | 2005-07-21 | 2005-07-27 | 79 |  |  | 276d | 0d |  | Animator B | 40h |  |
| 81 | 1.8.13 | Bros | 5d | 2005-07-14 | 2005-07-20 | 78 |  |  | 286d |  |  | Animator A | 40h |  |
| 82 | 1.8.14 | Cikle | 5d | 2005-07-28 | 2005-08-03 | 80 |  |  | 276d |  |  | Animator B | 40h |  |
| 83 | 1.9 | NPC In Game | 5d | 2006-07-13 | 2006-07-19 | 51 |  |  | 26d |  |  | Jesse Hayes | 40h |  |

| ID | WBS | Task | Duration | Start | Finish | Predecessors | Complete | Remaining | Total slack | Free slack | Constraint | Resources | Work | Actual work |
| --- | --- | --- | --- | --- | --- | --- | --- | --- | --- | --- | --- | --- | --- | --- |
| 84 | 1.10 | **Game Prop Art Assets** | 22d | 2005-05-26 | 2005-06-24 |  |  |  | 296d |  |  |  | 160h |  |
| 85 | 1.10.1 | 15 Common Models & Textures | 10d | 2005-05-26 | 2005-06-08 | 60 |  |  | 296d | 0d |  | Adam Barroody | 80h |  |
| 86 | 1.10.2 | **Snow Tileset Prop Art Assets** | 12d | 2005-06-09 | 2005-06-24 | 85 |  |  | 304d |  |  |  |  |  |
| 87 | 1.10.2.1 | 15 Common Textures | 2d | 2005-06-09 | 2005-06-10 |  |  |  | 304d | 0d |  |  |  |  |
| 88 | 1.10.2.2 | 15 Unique Models & Textures | 10d | 2005-06-13 | 2005-06-24 | 87 |  |  | 304d |  |  |  |  |  |
| 89 | 1.10.3 | **Lush Green Tileset Prop Art Assets** | 10d | 2005-06-09 | 2005-06-22 | 85 |  |  | 296d |  |  |  | 80h |  |
| 90 | 1.10.3.1 | 15 Unique Models & Textures | 10d | 2005-06-09 | 2005-06-22 |  |  |  | 296d | 0d |  | Adam Barroody | 80h |  |
| 91 | 1.10.4 | **Volcanic Tileset Prop Art Assets** | 12d | 2005-06-09 | 2005-06-24 | 85 |  |  | 304d |  |  |  |  |  |
| 92 | 1.10.4.1 | 15 Common Textures | 2d | 2005-06-09 | 2005-06-10 |  |  |  | 304d | 0d |  |  |  |  |
| 93 | 1.10.4.2 | 15 Unique Models & Textures | 10d | 2005-06-13 | 2005-06-24 | 92 |  |  | 304d |  |  |  |  |  |
| 94 | 1.10.5 | **Swamp Tileset Prop Art Assets** | 12d | 2005-06-09 | 2005-06-24 | 85 |  |  | 304d |  |  |  |  |  |
| 95 | 1.10.5.1 | 15 Common Textures | 2d | 2005-06-09 | 2005-06-10 |  |  |  | 304d | 0d |  |  |  |  |
| 96 | 1.10.5.2 | 15 Unique Models & Textures | 10d | 2005-06-13 | 2005-06-24 | 95 |  |  | 304d |  |  |  |  |  |
| 97 | 1.11 | Icon Creation | 25d | 2005-05-02 | 2005-06-03 |  |  |  | 319d |  | start no earlier than 2005-05-02 | Willie Real | 200h |  |
| 98 | 2 | **All Programming Related Work** | 346d | 2005-04-28 A | 2006-08-24 |  | 15% | 295.33d | 0d |  |  |  | 4160h | 560h |
| 99 | 2.1 | **Core Programming** | 270d | 2005-04-28 A | 2006-05-10 |  | 14% | 232.62d | 76d |  |  |  | 1040h | 144h |
| 100 | 2.1.1 | Model Exporter | 10d | 2005-11-22 | 2005-12-05 | 111 |  |  | 46d | 0d |  | Jason Gripp | 80h |  |
| 101 | 2.1.2 | Input System | 8d | 2005-05-12 A | 2005-05-23 A | 130 | 100% |  |  |  |  | Jason Gripp | 64h | 64h |
| 102 | 2.1.3 | Resource Manager | 7d | 2005-06-07 A | 2005-06-15 A | 154 | 100% |  |  |  |  | Jason Gripp | 56h | 56h |
| 103 | 2.1.4 | Misc Console Improvements | 3d | 2005-06-16 A | 2005-06-20 A | 102 | 100% |  |  |  |  | Jason Gripp | 24h | 24h |
| 104 | 2.1.5 | Archive Code Optimization | 6d | 2006-03-14 | 2006-03-21 | 128 |  |  | 46d | 0d |  | Jason Gripp | 48h |  |
| 105 | 2.1.6 | Favorable Ocluders | 1d | 2006-03-22 | 2006-03-22 | 104 |  |  | 46d | 0d |  | Jason Gripp | 8h |  |
| 106 | 2.1.7 | Network Optimization | 10d | 2006-01-31 | 2006-02-13 | 151 |  |  | 46d | 0d |  | Jason Gripp | 80h |  |
| 107 | 2.1.8 | Sound Optimization | 5d | 2006-03-23 | 2006-03-29 | 105 |  |  | 46d | 0d |  | Jason Gripp | 40h |  |
| 108 | 2.1.9 | Dedicated Server | 10d | 2006-04-27 | 2006-05-10 | 110 |  |  | 46d | 0d |  | Jason Gripp | 80h |  |
| 109 | 2.1.10 | Auto Patching / Downloading System | 5d | 2006-03-30 | 2006-04-05 | 107 |  |  | 46d | 0d |  | Jason Gripp | 40h |  |
| 110 | 2.1.11 | Anti Cheating | 15d | 2006-04-06 | 2006-04-26 | 109 |  |  | 46d | 0d |  | Jason Gripp | 120h |  |
| 111 | 2.1.12 | Novodex (Physex) Physics Install | 25d | 2005-10-18 | 2005-11-21 | 116 |  |  | 46d | 0d |  | Jason Gripp | 200h |  |
| 112 | 2.1.13 | Server Side Collision Detection | 15d | 2005-12-06 | 2005-12-26 | 100 |  |  | 46d | 0d |  | Jason Gripp | 120h |  |
| 113 | 2.1.14 | Voice Communication | 10d | 2005-04-28 | 2005-05-11 |  |  |  | 336d |  |  | Jason Morales | 80h |  |

| ID | WBS | Task | Duration | Start | Finish | Predecessors | Complete | Remaining | Total slack | Free slack | Constraint | Resources | Work | Actual work |
| --- | --- | --- | --- | --- | --- | --- | --- | --- | --- | --- | --- | --- | --- | --- |
| 114 | 2.2 | **Renderer Programming** | 208d | 2005-06-07 A | 2006-03-23 |  | 54% | 96.46d | 110d |  |  |  | 552h | 296h |
| 115 | 2.2.1 | Folliage System | 5d | 2005-06-07 A | 2005-06-13 A | 154 | 100% |  |  |  |  | Jason Gripp | 40h | 40h |
| 116 | 2.2.2 | Particle Rendering System | 10d | 2005-10-04 | 2005-10-17 |  |  |  | 46d | 0d | start no earlier than 2005-10-04 | Jason Gripp | 80h |  |
| 117 | 2.2.3 | Dynamic Lights | 8d | 2005-07-06 A | 2005-07-15 A | 116 | 100% |  |  |  |  | Jason Gripp | 64h | 64h |
| 118 | 2.2.4 | Mesh Deformation on GPU | 3d | 2005-07-18 A | 2005-07-20 A | 117 | 100% |  |  |  |  | Jason Gripp | 24h | 24h |
| 119 | 2.2.5 | Shadow Optimization | 4d | 2005-07-21 A | 2005-07-26 A | 118 | 100% |  |  |  |  | Jason Gripp | 32h | 32h |
| 120 | 2.2.6 | Debug Render Modes | 1d | 2006-03-23 | 2006-03-23 | 105 |  |  | 110d |  |  | Jason Gripp | 8h |  |
| 121 | 2.2.7 | Texture Resizing | 1d | 2005-07-29 A | 2005-07-29 A | 120 | 100% |  |  |  |  | Jason Gripp | 8h | 8h |
| 122 | 2.2.8 | Texture Compression | 1d | 2005-08-01 A | 2005-08-01 A | 121 | 100% |  |  |  |  | Jason Gripp | 8h | 8h |
| 123 | 2.2.9 | Scene Stats | 1d | 2005-08-02 | 2005-08-02 | 122 |  |  | 277d |  |  | Jason Gripp | 8h |  |
| 124 | 2.2.10 | Procedural Textures | 1d | 2005-08-03 A | 2005-08-03 A | 123 | 100% |  |  |  |  | Jason Gripp | 8h | 8h |
| 125 | 2.2.11 | Terrain Rendering Optimization | 1d | 2005-08-04 A | 2005-08-04 A | 124 | 100% |  |  |  |  | Jason Gripp | 8h | 8h |
| 126 | 2.2.12 | Water Shader | 3d | 2005-08-05 A | 2005-08-09 A | 125 | 100% |  |  |  |  | Jason Gripp | 24h | 24h |
| 127 | 2.2.13 | General Renderer Optimization | 10d | 2005-06-09 A | 2005-06-22 A | 110 | 100% |  |  |  |  | Jason Gripp | 80h | 80h |
| 128 | 2.2.14 | Low End Renderer | 20d | 2006-02-14 | 2006-03-13 | 106 |  |  | 46d | 0d |  | Jason Gripp | 160h |  |
| 129 | 2.3 | **Interface Programming** | 106d | 2005-04-28 A | 2005-09-22 |  | 56% | 47.11d | 240d |  |  |  | 88h | 80h |
| 130 | 2.3.1 | Damnation Transfer | 10d | 2005-04-28 A | 2005-05-11 A |  | 100% |  |  |  |  | Jason Gripp | 80h | 80h |
| 131 | 2.3.2 | Chat History | 1d | 2005-09-13 | 2005-09-13 | 130, 144 |  |  | 240d | 0d |  | Jason Morales | 8h |  |
| 132 | 2.3.3 | General Interface Polish | 7d | 2005-09-14 | 2005-09-22 | 131 |  |  | 240d |  |  |  |  |  |
| 133 | 2.4 | **Game Programming** | 346d | 2005-04-28 A | 2006-08-24 |  | 2% | 338.21d | 0d |  |  |  | 1936h | 40h |
| 134 | 2.4.1 | Special Ability System Programming | 5d | 2005-04-28 A | 2005-05-04 A |  | 100% |  |  |  |  | Jason Morales | 40h | 40h |
| 135 | 2.4.2 | Human Special Ability Set Up | 20d | 2005-05-05 | 2005-06-01 | 134 |  |  | 240d | 0d |  | Jason Morales | 160h |  |
| 136 | 2.4.3 | Melee Combat Programming | 5d | 2005-06-02 | 2005-06-08 | 135 |  |  | 240d | 0d |  | Jason Morales | 40h |  |
| 137 | 2.4.4 | Melee Combat Optimization | 10d | 2005-06-09 | 2005-06-22 | 136 |  |  | 240d | 0d |  | Jason Morales | 80h |  |
| 138 | 2.4.5 | Projectile / Ranged Weapons Optimization | 5d | 2005-06-23 | 2005-06-29 | 137 |  |  | 240d | 0d |  | Jason Morales | 40h |  |
| 139 | 2.4.6 | Human Ranged Set Up | 5d | 2005-06-30 | 2005-07-06 | 138 |  |  | 240d | 0d |  | Jason Morales | 40h |  |
| 140 | 2.4.7 | Building Set Up | 5d | 2005-07-07 | 2005-07-13 | 139 |  |  | 240d | 0d |  | Jason Morales | 40h |  |
| 141 | 2.4.8 | Effect System | 25d | 2005-07-14 | 2005-08-17 | 140 |  |  | 240d | 0d |  | Jason Morales | 200h |  |
| 142 | 2.4.9 | Item System & Set Up | 10d | 2005-08-18 | 2005-08-31 | 141 |  |  | 240d | 0d |  | Jason Morales | 80h |  |
| 143 | 2.4.10 | Siege System | 5d | 2005-09-01 | 2005-09-07 | 142 |  |  | 240d | 0d |  | Jason Morales | 40h |  |
| 144 | 2.4.11 | Stats & Experience System | 3d | 2005-09-08 | 2005-09-12 | 143 |  |  | 240d | 0d |  | Jason Morales | 24h |  |
| 145 | 2.4.12 | Beast Special Ability Set Up | 20d | 2005-04-28 | 2005-05-25 |  |  |  | 282d | 0d |  | Jason Morales | 160h |  |
| 146 | 2.4.13 | Beast Ranged Set Up | 5d | 2005-05-26 | 2005-06-01 | 145 |  |  | 282d | 0d |  | Jason Morales | 40h |  |
| 147 | 2.4.14 | Hellbourne Special Ability Set Up | 10d | 2006-07-13 | 2006-07-26 | 47 |  |  | 0d |  |  | Jason Morales | 80h |  |
| 148 | 2.4.15 | Hellbourne Ranged Set Up | 1d | 2006-07-27 | 2006-07-27 | 147 |  |  | 0d |  |  | Jason Morales | 8h |  |
| 149 | 2.4.16 | Commander Programming | 10d | 2005-07-13 | 2005-07-26 | 159 |  |  | 282d |  |  | Jason Morales | 80h |  |
| 150 | 2.4.17 | Game Browser | 3d | 2006-03-14 | 2006-03-16 | 128 |  |  | 115d |  |  | Jason Gripp | 24h |  |
| 151 | 2.4.18 | AI Programming | 25d | 2005-12-27 | 2006-01-30 | 112 |  |  | 46d | 0d |  | Jason Gripp | 200h |  |
| 152 | 2.4.19 | Tutorial / Single Player | 20d | 2006-07-28 | 2006-08-24 | 148 |  |  | 0d |  |  | Jason Morales; Jesse Hayes | 320h |  |
| 153 | 2.4.20 | Bot Programming | 30d | 2006-05-11 | 2006-06-21 | 108 |  |  | 46d |  |  | Jason Gripp | 240h |  |
| 154 | 2.5 | Editor Programming | 10d | 2005-05-24 | 2005-06-06 | 101 |  |  | 318d |  |  | Jason Gripp | 80h |  |

| ID | WBS | Task | Duration | Start | Finish | Predecessors | Total slack | Free slack | Constraint | Resources | Work |
| --- | --- | --- | --- | --- | --- | --- | --- | --- | --- | --- | --- |
| 155 | 2.6 | **Web Based Programming** | 29d | 2005-06-02 | 2005-07-12 |  | 282d |  |  |  | 464h |
| 156 | 2.6.1 | Player Statsistics | 4d | 2005-06-02 | 2005-06-07 | 146 | 282d | 0d |  | Mike Mills; Jason Morales | 64h |
| 157 | 2.6.2 | Authentication / Payment System | 10d | 2005-06-08 | 2005-06-21 | 156 | 282d | 0d |  | Mike Mills; Jason Morales | 160h |
| 158 | 2.6.3 | Master Server | 5d | 2005-06-22 | 2005-06-28 | 157 | 282d | 0d |  | Mike Mills; Jason Morales | 80h |
| 159 | 2.6.4 | Clan System | 10d | 2005-06-29 | 2005-07-12 | 158 | 282d | 0d |  | Mike Mills; Jason Morales | 160h |
| 160 | 3 | General Polish | 20d | 2006-05-15 | 2006-06-09 |  | 54d |  | start no earlier than 2006-05-15 | Jesse Hayes; Jason Morales; Jason Gripp | 480h |
| 161 | 4 | Beta Testing | 45d | 2006-05-15 | 2006-07-14 |  | 29d |  | start no earlier than 2006-05-15 | Jesse Hayes; Jason Morales; Jason Gripp | 1080h |
